# FIRST_2994_2013_Fab

Schedule from MS Project, 2013-01-05 to 2013-04-08, 3.5 hours a day.

## Calendars

- Standard: Mon 16:00-18:00, 18:30-20:00; Tue off; Wed-Thu 16:00-18:00, 18:30-20:00; Fri off; Sat 16:00-18:00, 18:30-20:00; Sun off.

## Resources

| Resource | Group |
| --- | --- |
| Plyboy | Robot |
| Swish | Robot |
| Whammo | Robot |
| Jack McCracken | Software/Electrical |
| Gabrielle Genereux | Software/Electrical |
| Will Prado | Software/Electrical |
| Celina Vivian | Software/Electrical |
| Ross Andress | Software/Electrical |
| Laurence Cunnane | Software/Electrical |
| Kyle Bergeron | Software/Electrical |
| Ken James | Mentor |
| Dan Williston | Mentor |
| Shahrukh Alavi | Mentor |
| Nicholas Loomes | Mechanical Design |
| Sean Frank | Mechanical Design |
| Yannick Brisebois | Mechanical Design |
| Paolo Vargas | Mechanical Design |
| Sam McCracken | Mechanical Design |
| Joshua Garbutt-St. Jean | Mechanical Design |
| Marissa Law | Mechanical Design |
| Daniel Garner | Mechanical Design |
| Tyler Cooke | Mechanical Design |
| Bailey Kulla | Mechanical Design |
| Gabriele Leduc | Mechanical Design |
| Matthew Bailey | Mentor |
| Phil Genereux | Mentor |
| Andrew Verheyden | Fabrication and Assembly |
| Brandon Bates | Fabrication and Assembly |
| Bruno Chiaragato | Fabrication and Assembly |
| James Carr | Fabrication and Assembly |
| Liam Pelly | Fabrication and Assembly |
| David Gourevitch | Fabrication and Assembly |
| James Prado | Fabrication and Assembly |
| Robert Myszka | Fabrication and Assembly |
| Blair Hulaj | Fabrication and Assembly |
| Jordan Parisee | Fabrication and Assembly |
| Konnor Wood | Fabrication and Assembly |
| Paul McDonough | Mentor |
| Hugh Carry | Mentor |

## Schedule

| ID | WBS | Task | Type | Duration | Start | Finish | Predecessors | Baseline start | Baseline finish | Baseline duration | Total slack | Free slack | Constraint | Resources | Work |
| --- | --- | --- | --- | --- | --- | --- | --- | --- | --- | --- | --- | --- | --- | --- | --- |
| 1 | 1 | **Build Season Milestones** |  | 26d | 2013-01-05 | 2013-02-19 |  | 2013-01-05 | 2013-02-19 | 26d | 27.86d |  |  |  |  |
| 2 | 1.1 | Kickoff | milestone | 0d | 2013-01-05 | 2013-01-05 |  | 2013-01-05 | 2013-01-05 | 0d | 53.86d |  |  |  |  |
| 3 | 1.2 | Stop-Build Day | milestone | 0d | 2013-02-19 | 2013-02-19 |  | 2013-02-19 | 2013-02-19 | 0d | 27.86d |  | start no earlier than 2013-02-19 |  |  |
| 4 | 2 | **Hardware Milestones** |  | 21.29d? | 2013-01-05 | 2013-02-11 |  | 2013-01-05 | 2013-02-11 | 21.29d? | 32.57d |  |  |  |  |
| 5 | 2.1 | CAD Done |  | 1d? | 2013-01-23 | 2013-01-23 |  | 2013-01-23 | 2013-01-23 | 1d? | 37.86d | 0d | start no earlier than 2013-01-23 |  |  |
| 6 | 2.2 | parts received from protocase | milestone | 0d | 2013-01-30 | 2013-01-30 |  | 2013-01-30 | 2013-01-30 | 0d | 36.86d | 0d | start no earlier than 2013-01-30 |  |  |
| 7 | 2.3 | Plyboy Compressed Air Charging System Done | milestone | 0d | 2013-01-05 | 2013-01-05 |  | 2013-01-05 | 2013-01-05 | 0d | 53.86d |  |  |  |  |
| 8 | 2.4 | Whammo Compressed Air Charging System Done | milestone | 0d | 2013-01-05 | 2013-01-05 |  | 2013-01-05 | 2013-01-05 | 0d | 53.86d |  |  |  |  |
| 9 | 2.5 | Whammo Driving Mechanism Done | milestone | 0d | 2013-02-02 | 2013-02-02 | 37 | 2013-02-02 | 2013-02-02 | 0d | 36.86d |  |  |  |  |
| 10 | 2.6 | Whammo Frisbee Collector Done | milestone | 0d | 2013-01-07 | 2013-01-07 | 44 | 2013-01-07 | 2013-01-07 | 0d | 51.86d |  |  |  |  |
| 11 | 2.7 | Whammo Shooter Done | milestone | 0d | 2013-01-07 | 2013-01-07 | 51 | 2013-01-07 | 2013-01-07 | 0d | 51.86d |  |  |  |  |
| 12 | 2.8 | Whammo Climb Mechanism Done | milestone | 0d | 2013-01-07 | 2013-01-07 | 58 | 2013-01-07 | 2013-01-07 | 0d | 51.86d |  |  |  |  |
| 13 | 2.9 | Whammo Hardware Complete | milestone | 0d | 2013-02-11 | 2013-02-11 |  | 2013-02-11 | 2013-02-11 | 0d | 32.57d |  | finish no earlier than 2013-02-11 |  |  |
| 14 | 3 | **Competition Season** |  | 18.86d | 2013-03-07 | 2013-04-08 |  | 2013-01-05 | 2013-04-08 | 53.86d? | 0d |  |  |  |  |
| 15 | 3.1 | FRC Greater Toronto East Regional |  | 6.86d | 2013-03-07 | 2013-03-18 |  | 2013-03-07 | 2013-03-18 | 6.86d | 12d |  | start no earlier than 2013-03-07 |  |  |
| 16 | 3.2 | FRC Greater Toronto West Regional |  | 6.86d | 2013-03-28 | 2013-04-08 |  | 2013-03-28 | 2013-04-08 | 6.86d | 0d |  | start no earlier than 2013-03-28 |  |  |
| 17 | 4 | start of fabrication | milestone | 0d | 2013-01-07 | 2013-01-07 |  | 2013-01-07 | 2013-01-07 | 0d | 47.86d | 0d | start no earlier than 2013-01-07 |  |  |
| 18 | 5 | First day at practice field | milestone | 0d | 2013-01-26 | 2013-01-26 |  | 2013-01-26 | 2013-01-26 | 0d | 32.86d | 0d | start no earlier than 2013-01-26 |  |  |
| 19 | 6 | **Fabricate Field Parts** |  | 9d | 2013-01-26 | 2013-02-09 | 18 | 2013-01-26 | 2013-02-09 | 9d | 32.86d |  |  |  |  |
| 20 | 6.1 | Fabricate Pyramid Parts |  | 9d | 2013-01-26 | 2013-02-09 |  | 2013-01-26 | 2013-02-09 | 9d | 32.86d |  |  |  |  |
| 21 | 6.2 | Fabricate Goal Parts |  | 7d | 2013-01-26 | 2013-02-06 |  | 2013-01-26 | 2013-02-06 | 7d | 34.86d |  |  |  |  |
| 22 | 6.3 | Fabricate Wall Parts |  | 2d | 2013-01-26 | 2013-01-28 |  | 2013-01-26 | 2013-01-28 | 2d | 39.86d |  |  |  |  |
| 23 | 7 | **Assemble Field** |  | 1d | 2013-01-26 | 2013-01-26 | 17, 18 | 2013-01-26 | 2013-01-26 | 1d | 40.86d |  |  |  | 17.5h |
| 24 | 7.1 | Assemble Pyramid |  | 1d | 2013-01-26 | 2013-01-26 |  | 2013-01-26 | 2013-01-26 | 1d | 40.86d |  |  | Andrew Verheyden; Tyler Cooke; Liam Pelly; Blair Hulaj; Paul McDonough | 17.5h |
| 25 | 7.2 | Assemble Goals |  | 1d | 2013-01-26 | 2013-01-26 |  | 2013-01-26 | 2013-01-26 | 1d | 40.86d |  |  |  |  |
| 26 | 7.3 | Assemble Walls |  | 1d | 2013-01-26 | 2013-01-26 |  | 2013-01-26 | 2013-01-26 | 1d | 40.86d |  |  |  |  |
| 27 | 7.4 | Assemble Floor |  | 1d | 2013-01-26 | 2013-01-26 |  | 2013-01-26 | 2013-01-26 | 1d | 40.86d |  |  |  |  |

| ID | WBS | Task | Duration | Start | Finish | Predecessors | Baseline start | Baseline finish | Baseline duration | Total slack | Free slack | Constraint |
| --- | --- | --- | --- | --- | --- | --- | --- | --- | --- | --- | --- | --- |
| 28 | 8 | **Assemble Gearbox** | 1d | 2013-01-16 | 2013-01-16 | 17 | 2013-01-16 | 2013-01-16 | 1d | 46.86d |  |  |
| 29 | 8.1 | WhammoA Gearbox | 1d | 2013-01-16 | 2013-01-16 |  | 2013-01-16 | 2013-01-16 | 1d | 46.86d |  | start no earlier than 2013-01-16 |
| 30 | 8.2 | WhammoB Gearbox | 1d | 2013-01-16 | 2013-01-16 |  | 2013-01-16 | 2013-01-16 | 1d | 46.86d |  | start no earlier than 2013-01-16 |
| 31 | 9 | **Fabricate Robot Parts** | 5d | 2013-01-24 | 2013-01-31 | 17, 5 | 2013-01-24 | 2013-01-31 | 5d | 37.86d |  |  |
| 32 | 9.1 | WhammoA Robot Parts | 5d | 2013-01-24 | 2013-01-31 |  | 2013-01-24 | 2013-01-31 | 5d | 37.86d |  |  |
| 33 | 9.2 | WhammoB Robot Parts | 5d | 2013-01-24 | 2013-01-31 |  | 2013-01-24 | 2013-01-31 | 5d | 37.86d |  |  |
| 34 | 10 | **Assemble Drive Frame** | 3d? | 2013-01-30 | 2013-02-02 | 17, 6 | 2013-01-30 | 2013-02-02 | 3d? | 36.86d |  |  |
| 35 | 10.1 | WhammoA Assemble Drive Frame | 1d? | 2013-01-30 | 2013-01-30 |  | 2013-01-30 | 2013-01-30 | 1d? | 36.86d | 0d |  |
| 36 | 10.2 | WhammoA Wiring for Drive System | 1d? | 2013-01-31 | 2013-01-31 | 35 | 2013-01-31 | 2013-01-31 | 1d? | 36.86d | 0d |  |
| 37 | 10.3 | WhammoA Mechanical Testing for Drive Frame | 1d? | 2013-02-02 | 2013-02-02 | 36 | 2013-02-02 | 2013-02-02 | 1d? | 36.86d | 0d |  |
| 38 | 10.4 | WhammoB Assemble Drive Frame | 1d? | 2013-01-30 | 2013-01-30 |  | 2013-01-30 | 2013-01-30 | 1d? | 36.86d | 0d |  |
| 39 | 10.5 | WhammoB Wiring for Drive System | 1d? | 2013-01-31 | 2013-01-31 | 38 | 2013-01-31 | 2013-01-31 | 1d? | 36.86d | 0d |  |
| 40 | 10.6 | WhammoB Mechanical Testing for Drive Frame | 1d? | 2013-02-02 | 2013-02-02 | 39 | 2013-02-02 | 2013-02-02 | 1d? | 36.86d |  |  |
| 41 | 11 | **Assemble Frisbee Collector** | 1d? | 2013-01-07 | 2013-01-07 | 17 | 2013-01-07 | 2013-01-07 | 1d? | 51.86d |  |  |
| 42 | 11.1 | WhammoA Assemble Frisbee Collector | 1d? | 2013-01-07 | 2013-01-07 |  | 2013-01-07 | 2013-01-07 | 1d? | 51.86d |  |  |
| 43 | 11.2 | WhammoA Wiring for Frisbee Collector | 1d? | 2013-01-07 | 2013-01-07 |  | 2013-01-07 | 2013-01-07 | 1d? | 51.86d |  |  |
| 44 | 11.3 | WhammoA Mechanical Testing for Frisbee Collector | 1d? | 2013-01-07 | 2013-01-07 |  | 2013-01-07 | 2013-01-07 | 1d? | 51.86d | 0d |  |
| 45 | 11.4 | WhammoB Assemble Frisbee Collector | 1d? | 2013-01-07 | 2013-01-07 |  | 2013-01-07 | 2013-01-07 | 1d? | 51.86d |  |  |
| 46 | 11.5 | WhammoB Wiring for Frisbee Collector | 1d? | 2013-01-07 | 2013-01-07 |  | 2013-01-07 | 2013-01-07 | 1d? | 51.86d |  |  |
| 47 | 11.6 | WhammoB Mechanical Testing for Frisbee Collector | 1d? | 2013-01-07 | 2013-01-07 |  | 2013-01-07 | 2013-01-07 | 1d? | 51.86d |  |  |
| 48 | 12 | **Assemble Shooter** | 1d? | 2013-01-07 | 2013-01-07 | 17 | 2013-01-07 | 2013-01-07 | 1d? | 51.86d |  |  |
| 49 | 12.1 | WhammoA Assemble Shooter | 1d? | 2013-01-07 | 2013-01-07 |  | 2013-01-07 | 2013-01-07 | 1d? | 51.86d |  |  |
| 50 | 12.2 | WhammoA Wiring for Shooter | 1d? | 2013-01-07 | 2013-01-07 |  | 2013-01-07 | 2013-01-07 | 1d? | 51.86d |  |  |
| 51 | 12.3 | WhammoA Mechanical Testing for Shooter | 1d? | 2013-01-07 | 2013-01-07 |  | 2013-01-07 | 2013-01-07 | 1d? | 51.86d | 0d |  |
| 52 | 12.4 | WhammoB Assemble Shooter | 1d? | 2013-01-07 | 2013-01-07 |  | 2013-01-07 | 2013-01-07 | 1d? | 51.86d |  |  |
| 53 | 12.5 | WhammoB Wiring for Shooter | 1d? | 2013-01-07 | 2013-01-07 |  | 2013-01-07 | 2013-01-07 | 1d? | 51.86d |  |  |
| 54 | 12.6 | WhammoB Mechanical Testing for Shooter | 1d? | 2013-01-07 | 2013-01-07 |  | 2013-01-07 | 2013-01-07 | 1d? | 51.86d |  |  |

| ID | WBS | Task | Duration | Start | Finish | Predecessors | Baseline start | Baseline finish | Baseline duration | Total slack | Free slack |
| --- | --- | --- | --- | --- | --- | --- | --- | --- | --- | --- | --- |
| 55 | 13 | **Assemble Climber** | 1d? | 2013-01-07 | 2013-01-07 | 17 | 2013-01-07 | 2013-01-07 | 1d? | 51.86d |  |
| 56 | 13.1 | WhammoA Assemble Climber | 1d? | 2013-01-07 | 2013-01-07 |  | 2013-01-07 | 2013-01-07 | 1d? | 51.86d |  |
| 57 | 13.2 | WhammoA Wiring for Climber | 1d? | 2013-01-07 | 2013-01-07 |  | 2013-01-07 | 2013-01-07 | 1d? | 51.86d |  |
| 58 | 13.3 | WhammoA Mechanical Testing for Climber | 1d? | 2013-01-07 | 2013-01-07 |  | 2013-01-07 | 2013-01-07 | 1d? | 51.86d | 0d |
| 59 | 13.4 | WhammoB Assemble Climber | 1d? | 2013-01-07 | 2013-01-07 |  | 2013-01-07 | 2013-01-07 | 1d? | 51.86d |  |
| 60 | 13.5 | WhammoB Wiring for Climber | 1d? | 2013-01-07 | 2013-01-07 |  | 2013-01-07 | 2013-01-07 | 1d? | 51.86d |  |
| 61 | 13.6 | WhammoB Mechanical Testing for Climber | 1d? | 2013-01-07 | 2013-01-07 |  | 2013-01-07 | 2013-01-07 | 1d? | 51.86d |  |
| 62 | 14 | **Prototypes** | 1d? | 2013-01-07 | 2013-01-07 | 17 | 2013-01-07 | 2013-01-07 | 1d? | 51.86d |  |
| 63 | 14.1 | Drive Frame | 1d? | 2013-01-07 | 2013-01-07 |  | 2013-01-07 | 2013-01-07 | 1d? | 51.86d |  |
| 64 | 14.2 | Frisbee Collector | 1d? | 2013-01-07 | 2013-01-07 |  | 2013-01-07 | 2013-01-07 | 1d? | 51.86d |  |
| 65 | 14.3 | Shooter | 1d? | 2013-01-07 | 2013-01-07 |  | 2013-01-07 | 2013-01-07 | 1d? | 51.86d |  |
| 66 | 14.4 | Climber | 1d? | 2013-01-07 | 2013-01-07 |  | 2013-01-07 | 2013-01-07 | 1d? | 51.86d |  |
